# AMI - Time schedule - 1-09-09

Schedule from MS Project, 2008-10-13 to 2011-06-07, costs in $.

## Calendars

- Standard: Mon-Fri 08:00-12:00, 13:00-17:00; Sat-Sun off.

## Resources

| Resource |
| --- |
| Hanger 19 |
| 208 |
| 267 |
| 268 |
| 160 |
| 137 |
| 139 |
| 153 |
| 288 |
| 142 |
| 146 |
| 213 |
| Hanger 17 |
| 141 |
| 143 |
| 138 |
| 214 |
| 215 |
| 151 |
| 14 |
| 145 |
| (14 & 145) |
| Hanger 12 |
| 72 |
| 206 |
| 22 |
| 22A |
| 23 |
| 23A |
| 23B |
| Hanger 9 |
| 21 |
| Hanger |
| .Hanger 19 |
| 121 |
| 122 |
| 123 |
| Hnager 10 |
| 111 |
| 144 |
| Rental Care (301 |
| 312) |
| 66 |
| 67 |
| 69 |
| 87 |
| 89 |
| 86 |
| 174 |
| (82 |
| 84) |
| 185 |
| 187 |
| 188 |
| 314 |
| 85 |
| 147 |
| 189 |
| (68) |
| 81a |
| 81b |
| 198 |
| (81) |
| 260 |
| 261 |
| 262 |
| Hanger 6 |
| 127 |
| 128 |
| 192 |
| 193 |
| hanger 3 |
| hanger 4 |
| Hanger5 |
| Hanger 5 |
| 263 |
| 75 |
| 76 |
| 78 |
| 79 |
| 169 |
| 71 |
| 73 |
| 74 |
| (161) |
| 197 |
| 350 |
| 77 |
| 250 |
| 209 |
| 210 |
| 211 |
| 212 |
| (255) |
| (269) |
| (402 |
| 404) |
| Hanger 19 - 13e |
| 4w |
| 153 - 3e |
| 5w |
| 1468e |
| Hanger 177e |
| 3w |
| 138 - 4e |
| Hanger 17 - 7e |
| 146 - 8e |
| 215 - 7e |
| 8w |
| (14 & 145) - 9e |
| Hanger 12 - 4e |
| 2w |
| 206 - 8e |
| 22A - 5e |
| 23B - 3e |
| Hanger 9 - 6e |
| 6w |
| Hnager 10 - 13e |
| 144 - 8e |
| 3e |
| 312) - 6e |
| 10w |
| 69 - 12e |
| 89 - 6e |
| 84) - 26e |
| 12w |
| 314 - 6e |
| (68) - 13e |
| 7w |
| (81) - 4e |
| 260 - 3e |
| Hanger 6 - 3e |
| Hanger 5 - 8e |
| 263 - |
| 263 -233 |
| 76 - 3e |
| 169 - 7e |
| (161) - 6e |
| 350 - 3e |
| 250 - 33e |
| 9w |
| 212 - 5e |
| 1w |
| (255) - 1e |
| (269) - 1e |
| 404) - 7e |
| 369e |
| 179w |

## Schedule

| ID | WBS | Task | Duration | Start | Finish | Predecessors | Total slack | Free slack | Constraint | Cost |
| --- | --- | --- | --- | --- | --- | --- | --- | --- | --- | --- |
| 1 | 1 | **JFK International Airport AMI Schedule** | 692d | 2008-10-13 | 2011-06-07 |  | 0d |  |  | 5,200,860 |
| 2 | 1.1 | **Buildings** | 689d | 2008-10-13 | 2011-06-02 |  | 3d |  |  | 4,127,260 |
| 3 | 1.1.1 | Terminal 4 - Upon TAA Approval | 9w | 2008-10-13 | 2008-12-12 |  | 527d | 0d | finish no earlier than 2008-12-12 | 72,930 |
| 4 | 1.1.2 | Terminal 4 - AMI and Meter Approval | 24w | 2008-12-15 | 2009-05-29 | 3 | 527d |  |  | 331,500 |
| 5 | 1.1.3 | Terminal 8 - Upon TAA Approval | 9w | 2008-11-03 | 2009-01-02 |  | 512d | 0d | start no earlier than 2008-11-03 | 26,400 |
| 6 | 1.1.4 | Terminal 8 - AMI and Meter Approval | 24w | 2009-01-05 | 2009-06-19 | 5 | 512d |  |  | 120,000 |
| 7 | 1.1.5 | Terminal 5 - Upon TAA Approval | 9w | 2008-10-30 | 2008-12-31 |  | 514d | 0d | finish no earlier than 2008-12-31 | 28,050 |
| 8 | 1.1.6 | Terminal 5 - AMI and Meter Approval | 24w | 2009-01-01 | 2009-06-17 | 7 | 514d |  |  | 127,500 |
| 9 | 1.1.7 | Terminals 2 & 3 - Upon TAA Approval | 9w | 2008-12-29 | 2009-02-27 |  | 472d | 0d | finish no earlier than 2009-02-27 | 39,600 |
| 10 | 1.1.8 | Terminal 2 & 3 - AMI and Meter Approval | 24w | 2009-03-02 | 2009-08-14 | 9 | 472d |  |  | 180,000 |
| 11 | 1.1.9 | Terminal 7 - Upon TAA Approval | 9w | 2009-02-16 | 2009-04-17 |  | 437d | 0d | finish no earlier than 2009-04-17 | 19,800 |
| 12 | 1.1.10 | Terminal 7 - AMI and Meter Approval | 24w | 2009-04-20 | 2009-10-02 | 11 | 437d |  |  | 90,000 |
| 13 | 1.1.11 | Terminal 1 - Upon TAA Approval | 9w | 2009-07-09 | 2009-09-09 |  | 334d | 0d | finish no earlier than 2009-09-09 | 13,200 |
| 14 | 1.1.12 | Terminal 1 - AMI and Meter Approval | 24w | 2009-09-10 | 2010-02-24 | 13 | 334d |  |  | 60,000 |
| 15 | 1.1.13 | Cluster 1 - Upon TAA Approval | 9w | 2009-06-30 | 2009-08-31 |  | 341d | 0d | finish no earlier than 2009-08-31 | 22,440 |
| 16 | 1.1.14 | Cluster 1 - AMI and Meter Approval | 24w | 2009-09-01 | 2010-02-15 | 15 | 341d |  |  | 102,000 |
| 17 | 1.1.15 | Cluster 2 - Upon TAA Approval | 9w | 2009-06-30 | 2009-08-31 |  | 341d | 0d | finish no earlier than 2009-08-31 | 11,880 |
| 18 | 1.1.16 | Cluster 2 - AMI and Meter Approval | 24w | 2009-09-01 | 2010-02-15 | 17 | 341d |  |  | 54,000 |
| 19 | 1.1.17 | Cluster 3 - Upon TAA Approval | 9w | 2009-06-01 | 2009-07-31 |  | 362d | 0d | start no earlier than 2009-06-01 | 13,200 |
| 20 | 1.1.18 | Cluster 3 - AMI and Meter Approval | 24w | 2009-08-03 | 2010-01-15 | 19 | 362d |  |  | 60,000 |
| 21 | 1.1.19 | Cluster 4 - Upon TAA Approval | 9w | 2009-06-01 | 2009-07-31 |  | 362d | 0d | start no earlier than 2009-06-01 | 6,600 |
| 22 | 1.1.20 | Cluster 4 - AMI and Meter Approval | 24w | 2009-08-03 | 2010-01-15 | 21 | 362d |  |  | 30,000 |
| 23 | 1.1.21 | Cluster 5 - Upon TAA Approval | 9w | 2009-06-01 | 2009-07-31 |  | 362d | 0d | start no earlier than 2009-06-01 | 19,800 |
| 24 | 1.1.22 | Cluster 5 - AMI and Meter Approval | 24w | 2009-08-03 | 2010-01-15 | 23 | 362d |  |  | 90,000 |
| 25 | 1.1.23 | Cluster 6 - Upon TAA Approval | 9w | 2009-07-30 | 2009-09-30 |  | 319d | 0d | finish no earlier than 2009-09-30 | 19,800 |
| 26 | 1.1.24 | Cluster 6 - AMI and Meter Approval | 24w | 2009-10-01 | 2010-03-17 | 25 | 319d |  |  | 90,000 |
| 27 | 1.1.25 | Cluster 7 - Upon TAA Approval | 9w | 2009-07-30 | 2009-09-30 |  | 319d | 0d | finish no earlier than 2009-09-30 | 19,800 |
| 28 | 1.1.26 | Cluster 7 - AMI and Meter Approval | 24w | 2009-10-01 | 2010-03-17 | 27 | 319d |  |  | 90,000 |
| 29 | 1.1.27 | Cluster 8 - Upon TAA Approval | 9w | 2009-07-30 | 2009-09-30 |  | 319d | 0d | finish no earlier than 2009-09-30 | 6,600 |
| 30 | 1.1.28 | Cluster 8 - AMI and Meter Approval | 24w | 2009-10-01 | 2010-03-17 | 29 | 319d |  |  | 30,000 |
| 31 | 1.1.29 | Cluster 9 - Upon TAA Approval | 9w | 2009-07-30 | 2009-09-30 |  | 319d | 0d | finish no earlier than 2009-09-30 | 17,160 |
| 32 | 1.1.30 | Cluster 9 - AMI and Meter Approval | 24w | 2009-10-01 | 2010-03-17 | 31 | 319d |  |  | 78,000 |
| 33 | 1.1.31 | Cluster 10 - Upon TAA Approval | 9w | 2009-10-01 | 2009-12-02 |  | 274d | 0d | start no earlier than 2009-10-01 | 13,200 |
| 34 | 1.1.32 | Cluster 10 - AMI and Meter Approval | 24w | 2009-12-03 | 2010-05-19 | 33 | 274d |  |  | 60,000 |
| 35 | 1.1.33 | Cluster 11 - Upon TAA Approval | 9w | 2009-10-01 | 2009-12-02 |  | 274d | 0d | start no earlier than 2009-10-01 | 12,760 |
| 36 | 1.1.34 | Cluster 11 - AMI and Meter Approval | 24w | 2009-12-03 | 2010-05-19 | 35 | 274d |  |  | 58,000 |
| 37 | 1.1.35 | Cluster 12 - Upon TAA Approval | 9w | 2009-10-15 | 2009-12-16 |  | 264d | 0d | start no earlier than 2009-10-15 | 10,560 |
| 38 | 1.1.36 | Cluster 12 - AMI and Meter Approval | 24w | 2009-12-17 | 2010-06-02 | 37 | 264d |  |  | 48,000 |
| 39 | 1.1.37 | Cluster 13 - Upon TAA Approval | 9w | 2009-10-15 | 2009-12-16 |  | 264d | 0d | start no earlier than 2009-10-15 | 22,440 |
| 40 | 1.1.38 | Cluster 13 - AMI and Meter Approval | 24w | 2009-12-17 | 2010-06-02 | 39 | 264d |  |  | 102,000 |
| 41 | 1.1.39 | Cluster 14 - Upon TAA Approval | 9w | 2009-10-15 | 2009-12-16 |  | 264d | 0d | start no earlier than 2009-10-15 | 13,200 |
| 42 | 1.1.40 | Cluster 14 - AMI and Meter Approval | 24w | 2009-12-17 | 2010-06-02 | 41 | 264d |  |  | 60,000 |
| 43 | 1.1.41 | Cluster 15 - Upon TAA Approval | 9w | 2009-12-01 | 2010-02-01 |  | 231d | 0d | start no earlier than 2009-12-01 | 21,120 |
| 44 | 1.1.42 | Cluster 15 - AMI and Meter Approval | 24w | 2010-02-02 | 2010-07-19 | 43 | 231d |  |  | 96,000 |
| 45 | 1.1.43 | Cluster 16 - Upon TAA Approval | 9w | 2009-10-15 | 2009-12-16 |  | 264d | 0d | start no earlier than 2009-10-15 | 21,120 |
| 46 | 1.1.44 | Cluster 16 - AMI and Meter Approval | 24w | 2009-12-17 | 2010-06-02 | 45 | 264d |  |  | 96,000 |
| 47 | 1.1.45 | Cluster 17 - Upon TAA Approval | 9w | 2009-10-15 | 2009-12-16 |  | 264d | 0d | start no earlier than 2009-10-15 | 13,200 |
| 48 | 1.1.46 | Cluster 17 - AMI and Meter Approval | 24w | 2009-12-17 | 2010-06-02 | 47 | 264d |  |  | 60,000 |
| 49 | 1.1.47 | Cluster 18 - Upon TAA Approval | 9w | 2009-10-15 | 2009-12-16 |  | 264d | 0d | start no earlier than 2009-10-15 | 50,160 |
| 50 | 1.1.48 | Cluster 18 - AMI and Meter Approval | 24w | 2009-12-17 | 2010-06-02 | 49 | 264d |  |  | 228,000 |
| 51 | 1.1.49 | Cluster 19 - Upon TAA Approval | 9w | 2009-12-01 | 2010-02-01 |  | 231d | 0d | start no earlier than 2009-12-01 | 13,200 |
| 52 | 1.1.50 | Cluster 19 - AMI and Meter Approval | 24w | 2010-02-02 | 2010-07-19 | 51 | 231d |  |  | 60,000 |
| 53 | 1.1.51 | Cluster 20 - Upon TAA Approval | 9w | 2010-01-27 | 2010-03-30 |  | 190d | 0d | finish no earlier than 2010-03-30 | 26,400 |
| 54 | 1.1.52 | Cluster 20 - AMI and Meter Approval | 24w | 2010-03-31 | 2010-09-14 | 53 | 190d |  |  | 120,000 |
| 55 | 1.1.53 | Cluster 21 - Upon TAA Approval | 9w | 2010-01-27 | 2010-03-30 |  | 190d | 0d | finish no earlier than 2010-03-30 | 10,560 |
| 56 | 1.1.54 | Cluster 21 - AMI and Meter Approval | 24w | 2010-03-31 | 2010-09-14 | 55 | 190d |  |  | 48,000 |
| 57 | 1.1.55 | Cluster 22 - Upon TAA Approval | 9w | 2010-01-27 | 2010-03-30 |  | 190d | 0d | finish no earlier than 2010-03-30 | 10,560 |
| 58 | 1.1.56 | Cluster 22 - AMI and Meter Approval | 24w | 2010-03-31 | 2010-09-14 | 57 | 190d |  |  | 48,000 |
| 59 | 1.1.57 | Cluster 23 - Upon TAA Approval | 9w | 2010-01-27 | 2010-03-30 |  | 190d | 0d | finish no earlier than 2010-03-30 | 15,840 |
| 60 | 1.1.58 | Cluster 23 - AMI and Meter Approval | 24w | 2010-03-31 | 2010-09-14 | 59 | 190d |  |  | 72,000 |
| 61 | 1.1.59 | Cluster 24 - Upon TAA Approval | 9w | 2010-01-27 | 2010-03-30 |  | 190d | 0d | finish no earlier than 2010-03-30 | 36,960 |
| 62 | 1.1.60 | Cluster 24 - AMI and Meter Approval | 24w | 2010-03-31 | 2010-09-14 | 61 | 190d |  |  | 168,000 |
| 63 | 1.1.61 | Cluster 25 - Upon TAA Approval | 9w | 2010-03-30 | 2010-05-31 |  | 146d | 0d | finish no earlier than 2010-05-31 | 6,600 |
| 64 | 1.1.62 | Cluster 25 - AMI and Meter Approval | 24w | 2010-06-01 | 2010-11-15 | 63 | 146d |  |  | 30,000 |
| 65 | 1.1.63 | Cluster 26 - Upon TAA Approval | 9w | 2010-03-30 | 2010-05-31 |  | 146d | 0d | finish no earlier than 2010-05-31 | 13,200 |
| 66 | 1.1.64 | Cluster 26 - AMI and Meter Approval | 24w | 2010-06-01 | 2010-11-15 | 65 | 146d |  |  | 60,000 |
| 67 | 1.1.65 | Cluster 27 - Upon TAA Approval | 9w | 2010-03-30 | 2010-05-31 |  | 146d | 0d | finish no earlier than 2010-05-31 | 15,840 |
| 68 | 1.1.66 | Cluster 27 - AMI and Meter Approval | 24w | 2010-06-01 | 2010-11-15 | 67 | 146d |  |  | 72,000 |
| 69 | 1.1.67 | Cluster 28 - Upon TAA Approval | 9w | 2010-03-30 | 2010-05-31 |  | 146d | 0d | finish no earlier than 2010-05-31 | 13,200 |
| 70 | 1.1.68 | Cluster 28 - AMI and Meter Approval | 24w | 2010-06-01 | 2010-11-15 | 69 | 146d |  |  | 60,000 |

Notes:
- 1: 100.00
- 2: 111369e,179w
- 15: 208,267,268,Hanger 19 - 13e,4w
- 17: 160,137,139,153 - 3e,5w
- 19: 288,142,146 - 8e,4w
- 21: 23,Hanger 17 - 7e,3w
- 23: 141,143,138 - 4e,5w
- 25: 214,215 - 7e,8w
- 27: 151,(14 & 145) - 9e,5w
- 29: Hanger 12 - 4e,2w
- 31: 72,206 - 8e,3w
- 33: 22,22A - 5e,4w
- 35: 23,23A,23B - 3e,5w
- 37: 21,Hanger 9 - 6e,6w
- 39: 121,122,123,Hnager 10 - 13e,4w
- 41: 111,144 - 8e,3e
- 43: Rental Care (301,312) - 6e,10w
- 45: 66,67,69 - 12e,4w
- 47: 87,89 - 6e,5w
- 49: 86,174,(82,84) - 26e,12w
- 51: 185,187,188,314 - 6e,4w
- 53: 85,147,189,(68) - 13e,7w
- 55: 81a,81b,198,(81) - 4e,2w
- 57: 260 - 3e,2w
- 59: 261,262,Hanger 6 - 3e,2w
- 61: 127,128,192,193,hanger 3,hanger 4,Hanger 5 - 8e,4w
- 63: 263 -233,5w
- 65: 75,76 - 3e,2w
- 67: 78,79,169 - 7e,5w
- 69: 71,73,74,(161) - 6e,4w

| ID | WBS | Task | Duration | Start | Finish | Predecessors | Total slack | Free slack | Constraint | Cost |
| --- | --- | --- | --- | --- | --- | --- | --- | --- | --- | --- |
| 71 | 1.1.69 | Cluster 29 - Upon TAA Approval | 9w | 2010-03-30 | 2010-05-31 |  | 146d | 0d | finish no earlier than 2010-05-31 | 9,240 |
| 72 | 1.1.70 | Cluster 29 - AMI and Meter Approval | 24w | 2010-06-01 | 2010-11-15 | 71 | 146d |  |  | 42,000 |
| 73 | 1.1.71 | Cluster 30 - Upon TAA Approval | 9w | 2010-03-30 | 2010-05-31 |  | 146d | 0d | finish no earlier than 2010-05-31 | 28,600 |
| 74 | 1.1.72 | Cluster 30 - AMI and Meter Approval | 24w | 2010-06-01 | 2010-11-15 | 73 | 146d |  |  | 130,000 |
| 75 | 1.1.73 | Cluster 31 - Upon TAA Approval | 9w | 2010-06-01 | 2010-08-02 |  | 101d | 0d | start no earlier than 2010-06-01 | 9,240 |
| 76 | 1.1.74 | Cluster 31 - AMI and Meter Approval | 24w | 2010-08-03 | 2011-01-17 | 75 | 101d |  |  | 42,000 |
| 77 | 1.1.75 | Cluster 32 - Upon TAA Approval | 9w | 2010-10-15 | 2010-12-16 |  | 3d | 0d | start no earlier than 2010-10-15 | 6,600 |
| 78 | 1.1.76 | Cluster 32 - AMI and Meter Approval | 24w | 2010-12-17 | 2011-06-02 | 77 | 3d |  |  | 30,000 |
| 79 | 1.1.77 | Cluster 33 - Upon TAA Approval | 9w | 2010-10-15 | 2010-12-16 |  | 3d | 0d | start no earlier than 2010-10-15 | 6,600 |
| 80 | 1.1.78 | Cluster 33 - AMI and Meter Approval | 24w | 2010-12-17 | 2011-06-02 | 79 | 3d |  |  | 30,000 |
| 81 | 1.1.79 | Cluster 34 - Upon TAA Approval | 9w | 2010-10-15 | 2010-12-16 |  | 3d | 0d | start no earlier than 2010-10-15 | 6,600 |
| 82 | 1.1.80 | Cluster 34 - AMI and Meter Approval | 24w | 2010-12-17 | 2011-06-02 | 81 | 3d |  |  | 30,000 |
| 83 | 1.2 | **Facilities far Apart** | 33w | 2010-08-02 | 2011-03-18 |  | 57d |  |  | 683,200 |
| 84 | 1.2.1 | Lighting Vault 1 thru 9 - Upon TAA Approval | 9w | 2010-08-02 | 2010-10-01 |  | 57d | 0d | start no earlier than 2010-08-02 | 39,600 |
| 85 | 1.2.2 | Lighting Vault 1 thru 9 - AMI and Meter Approval | 24w | 2010-10-04 | 2011-03-18 | 84 | 57d |  |  | 180,000 |
| 86 | 1.2.3 | Switch House 1 and 2 - Upon TAA Approval | 9w | 2010-08-02 | 2010-10-01 |  | 57d | 0d | start no earlier than 2010-08-02 | 8,800 |
| 87 | 1.2.4 | Switch House 1 and 2 - AMI and Meter Approval | 24w | 2010-10-04 | 2011-03-18 | 86 | 57d |  |  | 40,000 |
| 88 | 1.2.5 | Irrigation Pit 1 thru 17 - Upon TAA Approval | 9w | 2010-08-02 | 2010-10-01 |  | 57d | 0d | start no earlier than 2010-08-02 | 74,800 |
| 89 | 1.2.6 | Irrigation Pit 1 thru 17 - AMI and Meter Approval | 24w | 2010-10-04 | 2011-03-18 | 88 | 57d |  |  | 340,000 |
| 90 | 1.3 | **Outside Substations Next to Buildings** | 33w | 2010-10-20 | 2011-06-07 |  | 0d |  |  | 390,400 |
| 91 | 1.3.1 | Across from Building 86 - Upon TAA Approval | 9w | 2010-10-20 | 2010-12-21 |  | 0d |  | start no earlier than 2010-10-20 | 4,400 |
| 92 | 1.3.2 | Across from Building 86 - AMI and Meter Approval | 24w | 2010-12-22 | 2011-06-07 | 91 | 0d |  |  | 20,000 |
| 93 | 1.3.3 | Next to Building 196 - Upon TAA Approval | 9w | 2010-10-20 | 2010-12-21 |  | 0d |  | start no earlier than 2010-10-20 | 4,400 |
| 94 | 1.3.4 | Next to Building 196 - AMI and Meter Approval | 24w | 2010-12-22 | 2011-06-07 | 93 | 0d |  |  | 20,000 |
| 95 | 1.3.5 | Next to Building 197 - Upon TAA Approval | 9w | 2010-10-20 | 2010-12-21 |  | 0d |  | start no earlier than 2010-10-20 | 4,400 |
| 96 | 1.3.6 | Next to Building 197 - AMI and Meter Approval | 24w | 2010-12-22 | 2011-06-07 | 95 | 0d |  |  | 20,000 |
| 97 | 1.3.7 | Next to Building 71 & Next to Building 73 - Upon TAA Approval | 9w | 2010-10-20 | 2010-12-21 |  | 0d |  | start no earlier than 2010-10-20 | 4,400 |
| 98 | 1.3.8 | Next to Building 71 & Next to Building 73 - AMI and Meter Approval | 24w | 2010-12-22 | 2011-06-07 | 97 | 0d |  |  | 20,000 |
| 99 | 1.3.9 | Next to Building 75 - Upon TAA Approval | 9w | 2010-10-20 | 2010-12-21 |  | 0d |  | start no earlier than 2010-10-20 | 4,400 |
| 100 | 1.3.10 | Next to Building 75 - AMI and Meter Approval | 24w | 2010-12-22 | 2011-06-07 | 99 | 0d |  |  | 20,000 |
| 101 | 1.3.11 | Next to Building 76 - Upon TAA Approval | 9w | 2010-10-20 | 2010-12-21 |  | 0d |  | start no earlier than 2010-10-20 | 4,400 |
| 102 | 1.3.12 | Next to Building 76 - AMI and Meter Approval | 24w | 2010-12-22 | 2011-06-07 | 101 | 0d |  |  | 20,000 |
| 103 | 1.3.13 | Next to Building 78 - Upon TAA Approval | 9w | 2010-10-20 | 2010-12-21 |  | 0d |  | start no earlier than 2010-10-20 | 4,400 |
| 104 | 1.3.14 | Next to Building 78 - AMI and Meter Approval | 24w | 2010-12-22 | 2011-06-07 | 103 | 0d |  |  | 20,000 |
| 105 | 1.3.15 | Next to Building 89 - Upon TAA Approval | 9w | 2010-10-20 | 2010-12-21 |  | 0d |  | start no earlier than 2010-10-20 | 4,400 |
| 106 | 1.3.16 | Next to Building 89 - AMI and Meter Approval | 24w | 2010-12-22 | 2011-06-07 | 105 | 0d |  |  | 20,000 |
| 107 | 1.3.17 | Next to Building 161 - Upon TAA Approval | 9w | 2010-10-20 | 2010-12-21 |  | 0d |  | start no earlier than 2010-10-20 | 4,400 |
| 108 | 1.3.18 | Next to Building 161 - AMI and Meter Approval | 24w | 2010-12-22 | 2011-06-07 | 107 | 0d |  |  | 20,000 |
| 109 | 1.3.19 | Next to Building 162 - Upon TAA Approval | 9w | 2010-10-20 | 2010-12-21 |  | 0d |  | start no earlier than 2010-10-20 | 4,400 |
| 110 | 1.3.20 | Next to Building 162 - AMI and Meter Approval | 24w | 2010-12-22 | 2011-06-07 | 109 | 0d |  |  | 20,000 |
| 111 | 1.3.21 | Outside Building 67 - Upon TAA Approval | 9w | 2010-10-20 | 2010-12-21 |  | 0d |  | start no earlier than 2010-10-20 | 4,400 |
| 112 | 1.3.22 | Outside Building 67 - AMI and Meter Approval | 24w | 2010-12-22 | 2011-06-07 | 111 | 0d |  |  | 20,000 |
| 113 | 1.3.23 | Outside Building 143 - Upon TAA Approval | 9w | 2010-10-20 | 2010-12-21 |  | 0d |  | start no earlier than 2010-10-20 | 4,400 |
| 114 | 1.3.24 | Outside Building 143 - AMI and Meter Approval | 24w | 2010-12-22 | 2011-06-07 | 113 | 0d |  |  | 20,000 |
| 115 | 1.3.25 | Outside Building 153 - Upon TAA Approval | 9w | 2010-10-20 | 2010-12-21 |  | 0d |  | start no earlier than 2010-10-20 | 4,400 |
| 116 | 1.3.26 | Outside Building 153 - AMI and Meter Approval | 24w | 2010-12-22 | 2011-06-07 | 115 | 0d |  |  | 20,000 |
| 117 | 1.3.27 | Outside Building 288 - Upon TAA Approval | 9w | 2010-10-20 | 2010-12-21 |  | 0d |  | start no earlier than 2010-10-20 | 4,400 |
| 118 | 1.3.28 | Outside Building 288 - AMI and Meter Approval | 24w | 2010-12-22 | 2011-06-07 | 117 | 0d |  |  | 20,000 |
| 119 | 1.3.29 | Outside Building 142/ Buckeye Fuel Farm - Upon TAA Approval | 9w | 2010-10-20 | 2010-12-21 |  | 0d |  | start no earlier than 2010-10-20 | 4,400 |
| 120 | 1.3.30 | Outside Building 142/ Buckeye Fuel Farm - AMI and Meter Approval | 24w | 2010-12-22 | 2011-06-07 | 119 | 0d |  |  | 20,000 |
| 121 | 1.3.31 | Outside Building 156/ Buckeye Fuel Farm - Upon TAA Approval | 9w | 2010-10-20 | 2010-12-21 |  | 0d |  | start no earlier than 2010-10-20 | 4,400 |
| 122 | 1.3.32 | Outside Building 156/ Buckeye Fuel Farm - AMI and Meter Approval | 24w | 2010-12-22 | 2011-06-07 | 121 | 0d |  |  | 20,000 |

Notes:
- 71: 197,350 - 3e,3w
- 73: 77,250 - 33e,9w
- 75: 209,210,211,212 - 5e,1w
- 77: (255) - 1e,2w
- 79: (269) - 1e,1w
- 81: (402,404) - 7e,5w
