# PGI Schedule - 1-9-09

Schedule from MS Project, 2008-05-12 to 2009-03-09, costs in $, A marks actual dates.

## Calendars

- Standard: Mon-Fri 08:00-12:00, 13:00-17:00; Sat-Sun off.

## Resources

| Resource | Rate |
| --- | --- |
| Farmers Building A |  |
| Farmers A Buildings - 29 |  |
| 263 |  |
| 193 |  |
| 127 |  |
| 128 |  |
| 192 |  |
| 68 |  |
| 262 |  |
| 67 |  |
| h6 |  |
| 85 |  |
| 189 |  |
| 198 |  |
| 73 |  |
| 250 |  |
| 350 |  |
| 197 |  |
| 77 |  |
| H7 |  |
| Farmers B - 294 |  |
| 295 |  |
| 156 |  |
| 50B |  |
| 74 |  |
| 196 |  |
| H# |  |
| H$ |  |
| H% |  |
| 66 |  |
| 69 |  |
| H^ |  |
| 261 |  |
| 75 |  |
| Farmers C - 261 |  |
| 254 |  |
| 161 |  |
| 89 |  |
| 124 |  |
| 204 |  |
| 110 |  |
| 86 |  |
| 314 |  |
| 83 |  |
| 84 |  |
| 147 |  |
| 76 |  |
| 78 |  |
| 79 |  |
| 87 |  |
| buliding 2550 |  |
| Buildings: 29 |  |
| 77 - Hangers: 6 & 7 |  |
| Buildings: 294 |  |
| 69 - Hangers: 3 |  |
| 4 |  |
| 5 |  |
| 7 |  |
| Buildings: 29263 |  |
| Courtney Simpson | 150 |
| Dennis Ramos | 90 |
| Wellington Luzon | 90 |
| Jermaine McArthur | 90 |
| Richard Hutchinson | 90 |
| Lydia Detres | 70 |
| Michael Ball | 175 |
| 68400. |  |

## Schedule

| ID | WBS | Task | Duration | Start | Finish | Predecessors | Complete | Remaining | Total slack | Constraint | Resources | Work | Actual work | Cost | Actual cost |
| --- | --- | --- | --- | --- | --- | --- | --- | --- | --- | --- | --- | --- | --- | --- | --- |
| 1 | 1 | **JFK PGI** | 215.13d | 2008-05-12 A | 2009-03-09 |  | 94% | 13.14d | 0d |  |  | 2568h | 2568h | 815,685 | 815,685 |
| 2 | 1.1 | **Orientation and Overview** | 18d | 2008-05-12 A | 2008-06-04 A |  | 100% |  |  |  |  | 432h | 432h | 88,040 | 88,040 |
| 3 | 1.1.1 | Sida Class | 0.6w | 2008-05-12 A | 2008-05-14 A |  | 100% |  |  | start no earlier than 2008-05-12 | Courtney Simpson; Dennis Ramos; Wellington Luzon | 72h | 72h | 26,467 | 26,467 |
| 4 | 1.1.2 | Working with Basemap and Meters | 1w | 2008-05-16 A | 2008-05-22 A |  | 100% |  |  | start no earlier than 2008-05-16 | Courtney Simpson; Dennis Ramos; Wellington Luzon | 120h | 120h | 30,226 | 30,226 |
| 5 | 1.1.3 | Familiarization with JFK facilities and Field Training | 2w | 2008-05-22 A | 2008-06-04 A |  | 100% |  |  | start no earlier than 2008-05-22 | Courtney Simpson; Dennis Ramos; Wellington Luzon | 240h | 240h | 31,347 | 31,347 |
| 6 | 1.2 | **Farmer Substation** | 33.33d | 2008-06-10 A | 2008-07-25 A |  | 100% |  |  |  |  | 880h | 880h | 302,425 | 302,425 |
| 7 | 1.2.1 | **Phase 1 - PGI** | 33.33d | 2008-06-10 A | 2008-07-25 A |  | 100% |  |  |  |  | 880h | 880h | 302,425 | 302,425 |
| 8 | 1.2.1.1 | Farmers A: | 0.67w | 2008-06-10 A | 2008-06-13 A |  | 100% |  |  | start no earlier than 2008-06-10 | Courtney Simpson; Dennis Ramos; Wellington Luzon | 80h | 80h | 75,425 | 75,425 |
| 9 | 1.2.1.2 | Farmers B: | 2w | 2008-06-13 A | 2008-06-27 A | 8 | 100% |  |  |  | Courtney Simpson; Dennis Ramos; Wellington Luzon | 240h | 240h | 76,275 | 76,275 |
| 10 | 1.2.1.3 | Farmers C: | 2w | 2008-06-27 A | 2008-07-11 A | 9 | 100% |  |  |  | Courtney Simpson; Dennis Ramos; Wellington Luzon; 68400. | 320h | 320h | 76,400 | 76,400 |
| 11 | 1.2.1.4 | Farmers D: | 2w | 2008-07-11 A | 2008-07-25 A | 10 | 100% |  |  |  | Courtney Simpson; Dennis Ramos; Wellington Luzon | 240h | 240h | 74,325 | 74,325 |
| 12 | 1.3 | **Bergen Substation** | 16d | 2008-07-25 A | 2008-08-18 A | 11 | 100% |  |  |  |  | 384h | 384h | 152,995 | 152,995 |
| 13 | 1.3.1 | **Phase 1 - PGI** | 16d | 2008-07-25 A | 2008-08-18 A |  | 100% |  |  |  |  | 384h | 384h | 152,995 | 152,995 |
| 14 | 1.3.1.1 | Bergen A: | 4d | 2008-07-25 A | 2008-07-31 A |  | 100% |  |  |  | Courtney Simpson; Dennis Ramos; Wellington Luzon | 96h | 96h | 33,425 | 33,425 |
| 15 | 1.3.1.2 | Bergen B: | 4d | 2008-07-31 A | 2008-08-06 A | 14 | 100% |  |  |  | Courtney Simpson; Dennis Ramos; Wellington Luzon | 96h | 96h | 30,225 | 30,225 |
| 16 | 1.3.1.3 | Bergen C: | 4d | 2008-08-06 A | 2008-08-12 A | 15 | 100% |  |  |  | Courtney Simpson; Dennis Ramos; Wellington Luzon | 96h | 96h | 37,970 | 37,970 |
| 17 | 1.3.1.4 | Bergen D: | 4d | 2008-08-12 A | 2008-08-18 A | 16 | 100% |  |  |  | Courtney Simpson; Dennis Ramos; Wellington Luzon | 96h | 96h | 51,375 | 51,375 |
| 18 | 1.4 | **Van Wyck Substation** | 4.8d | 2008-08-18 A | 2008-08-25 A | 17 | 100% |  |  |  |  | 192h | 192h | 30,000 | 30,000 |
| 19 | 1.4.1 | **Phase 1 - PGI** | 4.8d | 2008-08-18 A | 2008-08-25 A |  | 100% |  |  |  |  | 192h | 192h | 30,000 | 30,000 |
| 20 | 1.4.1.1 | Van Wyck A: | 1.2d | 2008-08-18 A | 2008-08-19 A |  | 100% |  |  |  | Courtney Simpson; Dennis Ramos; Wellington Luzon; Jermaine McArthur; Richard Hutchinson | 48h | 48h | 7,500 | 7,500 |
| 21 | 1.4.1.2 | Van Wyck B: | 1.2d | 2008-08-19 A | 2008-08-20 A | 20 | 100% |  |  |  | Courtney Simpson; Dennis Ramos; Wellington Luzon; Jermaine McArthur; Richard Hutchinson | 48h | 48h | 7,328 | 7,328 |
| 22 | 1.4.1.3 | Van Wyck C: | 1.2d | 2008-08-20 A | 2008-08-21 A | 21 | 100% |  |  |  | Courtney Simpson; Dennis Ramos; Wellington Luzon; Jermaine McArthur; Richard Hutchinson | 48h | 48h | 8,457 | 8,457 |
| 23 | 1.4.1.4 | Van Wyck D: | 1.2d | 2008-08-21 A | 2008-08-25 A | 22 | 100% |  |  |  | Courtney Simpson; Dennis Ramos; Wellington Luzon; Jermaine McArthur; Richard Hutchinson | 48h | 48h | 6,715 | 6,715 |
| 24 | 1.5 | **Central Substation** | 140d | 2008-08-25 A | 2009-03-09 | 23 | 91% | 12.48d | 0d |  |  | 680h | 680h | 242,225 | 242,225 |
| 25 | 1.5.1 | **Phase 1 - PGI** | 140d | 2008-08-25 A | 2009-03-09 |  | 91% | 12.48d | 0d |  |  | 680h | 680h | 242,225 | 242,225 |
| 26 | 1.5.1.1 | Central A: | 0.6w | 2008-08-25 A | 2008-08-28 A |  | 100% |  |  |  | Courtney Simpson; Dennis Ramos; Wellington Luzon; Jermaine McArthur; Richard Hutchinson | 120h | 120h | 47,220 | 47,220 |
| 27 | 1.5.1.2 | Central B: | 0.6w | 2008-08-28 A | 2008-09-02 A | 26 | 100% |  |  |  | Courtney Simpson; Dennis Ramos; Wellington Luzon; Jermaine McArthur; Richard Hutchinson | 120h | 120h | 42,473 | 42,473 |
| 28 | 1.5.1.3 | Central C: | 0.6w | 2008-09-02 A | 2008-09-05 A | 27 | 100% |  |  |  | Courtney Simpson; Dennis Ramos; Wellington Luzon; Jermaine McArthur; Richard Hutchinson | 120h | 120h | 43,580 | 43,580 |
| 29 | 1.5.1.4 | Central E: | 0.6w | 2008-09-05 A | 2008-09-10 A | 28 | 100% |  |  |  | Courtney Simpson; Dennis Ramos; Wellington Luzon; Jermaine McArthur; Richard Hutchinson | 120h | 120h | 48,524 | 48,524 |
| 30 | 1.5.1.5 | Central F: | 1w | 2008-09-10 A | 2008-09-17 A | 29 | 100% |  |  |  | Courtney Simpson; Dennis Ramos; Wellington Luzon; Jermaine McArthur; Richard Hutchinson | 200h | 200h | 60,428 | 60,428 |
| 31 | 1.5.1.6 | Multiplier Issue - to be determined | 7mo | 2008-08-25 A | 2009-03-09 |  | 90% | 0.7mo | 0d |  |  |  |  |  |  |

Notes:
- 8: Buildings: 29, 263, 193, 127, 128, 192, 68, 262, 67, 85, 189, 198, 73, 250, 350, 197, 77 - Hangers: 6 & 7
- 9: Buildings: 294, 295, 156, 50B, 74, 250, 196, 127, 128, 192, 193, 263, 66, 67, 69 - Hangers: 3, 4, 5, 7
- 10: Buildings: 261, 262, 77, 67, 254, 161, 250, 89, 124, 204, 110, 86, 314, 83, 84, 147, 75, 76, 78, 79, 87
- 11: Buildings: 261, 89, 110, 161, 69, 89, 67, 250, 147, 68, 83, 84, 147, 260, 76, 79, 78, 77, 254, 66, 83, 80, 85, 198
- 14: Buildings: 208, 153, 150, 151, 139, 268, 215, 14 - Hangers: 19, 17, 16, 15, 12
- 15: Buildings: 208, 14, 214, 146, 116, 243 - Hangers: 19, 16, 15, 17, 12 - Bulk Fuel 2/3
- 16: Building: 14 & 208 - Hangers: 12 & 19
- 17: Buildings: 208, 139, 215, 146, 116, 243, 171, 214, 151 - Hangers: 12, 15, 17, 19
- 20: Buildings: 23, 72, 189, 90, 269, 128
- 21: Buildings: 111, 138, 269
- 22: Buildings: 90, 92, 121, 122, 138, 103, 121, 122, 138, 141, 72, 103 - Hangers: 10
- 23: Buildings: 123, 138, 141, 111, 142, 143
- 26: Buildings: 60, 95, 241 - Terminals: 2, 3, 4, 5, 6
- 27: Buildings: 241 - Terminals: 1, 2, 3, 4, 6, 8 - Misc: LV7, LV9, LV8, LV6, SW2
- 28: Buildings: 24, 241 - Terminals:1, 8 - Misc: LV7, SW2, Van Wyck Pump Station
- 29: Buildings: 60, 109, 36 - Terminals: 2, 3, 4, 7, 8 - Misc: LV8
- 30: Buildings: 60, 36, 241, 49 - Terminal: 4, 7, 3, 1 - Misc: LV6, Van Wyck Pump Station
