# PABT PGI - New PABT Job Schedule

Schedule from MS Project, 2008-12-08 to 2008-12-18, A marks actual dates.

## Calendars

- Standard: Mon-Fri 08:00-12:00, 13:00-17:00; Sat-Sun off.

## Resources

| Resource |
| --- |
| Electric Shop |
| Allied Fuel Farm |
| Electric Shop & Allied Fuel Farm |
| Main Building-Sky Chefs-Flight Safety Building-Hangar 7C-PA Police |
| Marine Air Terminal & Delta Shuttle |
| Building 84 - West Main Substation - Northwest Mechanic Shop - Continental Mechanic Shop - Bus Stop Trailers |
| Main Building -Sky Chefs-Flight Safety Building-Hangar 7C-PA Police |
| Main Building - Sky Chefs - Flight Safety Building - Hangar 7C -PA Police |
| Electric Shop - Allied Fuel Farm |
| Main Building - Sky Chefs - Flight Safety Building - Hangar 7C - PA Police |
| Avis/ Hertz Substation - BP Substation |
| Avis/Hertz Substation - BP Gas Substation |
| All Floor Of Terminal B |
| Hudson News |
| radio Shack |
| Stop & Go |
| Boltons |
| Rainbow (No Longer there) |
| Greyhound Lines Inc. |
| St |
| Greyhound Lines Inc. and Strawberry |
| Barber Shop #1 |
| Beauty Shop #2 |
| Auntie's Anne's #3 and Au Bon Pain |
| Rosa Bake Shop |
| Casa Java |
| GNC & California Burritos |
| Por Drago & Poppers |
| SGL |
| Five Brothers & Sisters |
| Bouini |
| Bank of America and Jamba Juice |
| Big Bowl |
| Café Metro |
| Federal Express |
| McAnn's Bar |
| Brief Case Pub and Florist |
| Tropica Juice Bar |
| Jay's Hallmark |
| Hudson Transit Lines |
| Viacom |
| Greyhound Lines |
| Inc. |
| PA Master Meter |
| RA Big Apple Café |
| NJ Transit |
| Temp Compressor |
| Snack-N-Wheels |
| MC Caffee Shop |
| Fanny Farmer |
| Greyhound tickets and Adironak Trailways |
| Adirondak Trailways |
| Au Bon Pain |
| Walgreens |
| Music Expolsion |
| Villa Pizza and Post & Coach |
| Postal Service |
| Jo-Anns Nuts |
| Deli Plus |
| NY Blood Center |
| Cheese Hut |
| Downes Luggage |
| Lost-N-Found |
| NJ Transit Bus |
| Marrella Hair |

## Schedule

| ID | WBS | Task | Duration | Start | Finish | Predecessors | Complete | Remaining | Total slack | Constraint | Deadline | Resources | Work | Actual work |
| --- | --- | --- | --- | --- | --- | --- | --- | --- | --- | --- | --- | --- | --- | --- |
| 1 | 1 | **BUS TERMINAL - PGI** | 3d | 2008-12-08 A | 2008-12-10 A |  | 100% |  |  |  | 2008-12-19 |  | 222h | 222h |
| 2 | 1.1 | Orientation and Overview | 1d | 2008-12-09 A | 2008-12-09 A |  | 100% |  |  | start no earlier than 2008-12-09 |  |  | 8h | 8h |
| 3 | 1.2 | Sida Class | 1d | 2008-12-10 A | 2008-12-10 A | 2 | 100% |  |  |  |  |  | 8h | 8h |
| 4 | 1.3 | Familiarization with PABT facilities and Field Training | 1d | 2008-12-08 A | 2008-12-08 A | 3 | 100% |  |  |  |  |  | 8h | 8h |
| 5 | 1.4 | **South Wing** | 3d | 2008-12-08 A | 2008-12-10 A |  | 100% |  |  |  |  |  | 198h | 198h |
| 6 | 1.4.1 | **Phase 1 - PGI** | 3d | 2008-12-08 A | 2008-12-10 A |  | 100% |  |  |  |  |  | 198h | 198h |
| 7 | 1.4.1.1 | 1st. Floor Ground Level - Room S141 | 1d | 2008-12-08 A | 2008-12-08 A |  | 100% |  |  | finish no earlier than 2008-12-08 |  | Hudson News; radio Shack [95%]; Stop & Go [95%]; Boltons [95%]; Rainbow (No Longer there) [95%]; Greyhound Lines Inc. [95%] | 46h | 46h |
| 8 | 1.4.1.2 | 1st Floor - Room S131 | 1d | 2008-12-08 A | 2008-12-08 A | 7 | 100% |  |  | start no earlier than 2008-12-08 |  | Beauty Shop #2; Barber Shop #1; Auntie's Anne's #3 and Au Bon Pain | 24h | 24h |
| 9 | 1.4.1.3 | 1st Floor Ground Level - Room S132 | 1d | 2008-12-08 A | 2008-12-08 A | 8 | 100% |  |  | finish no earlier than 2008-12-08 |  | Rosa Bake Shop; Casa Java; GNC & California Burritos | 24h | 24h |
| 10 | 1.4.1.4 | Second Floor Zone 1 - Room S241 | 1d | 2008-12-08 A | 2008-12-08 A | 9 | 100% |  |  | finish no earlier than 2008-12-08 |  | Por Drago & Poppers | 8h | 8h |
| 11 | 1.4.1.5 | Second Floor - Room S221 | 1d | 2008-12-09 A | 2008-12-09 A | 10 | 100% |  |  | finish no earlier than 2008-12-09 |  | SGL; Five Brothers & Sisters; Hudson News; Bouini; Bank of America and Jamba Juice | 40h | 40h |
| 12 | 1.4.1.6 | Second Floor - Room S211 | 1d | 2008-12-09 A | 2008-12-09 A | 11 | 100% |  |  | finish no earlier than 2009-01-06 |  | Big Bowl | 8h | 8h |
| 13 | 1.4.1.7 | Second Floor - Room S231 | 1d | 2008-12-10 A | 2008-12-10 A | 12 | 100% |  |  | start no earlier than 2008-12-09 |  | Hudson News; Café Metro; Federal Express; McAnn's Bar; Boltons; Brief Case Pub and Florist | 48h | 48h |
| 14 | 2 | **North Wing** | 7d | 2008-12-10 A | 2008-12-18 |  | 93% | 0.5d | 0d |  |  |  | 584h | 584h |
| 15 | 2.1 | **Phase 2 - PGI** | 7d | 2008-12-10 A | 2008-12-18 |  | 93% | 0.5d | 0d |  |  |  | 584h | 584h |
| 16 | 2.1.1 | Second Floor - Room N2A2 | 3d | 2008-12-10 A | 2008-12-12 A |  | 100% |  |  | finish no earlier than 2008-12-12 |  | Tropica Juice Bar; Jay's Hallmark; Hudson News; Hudson Transit Lines; Viacom; Greyhound Lines; Inc. | 168h | 168h |
| 17 | 2.1.2 | Subway Level - Room NSAF | 3d | 2008-12-10 A | 2008-12-12 A | 16 | 100% |  |  | finish no earlier than 2008-12-12 |  | PA Master Meter; RA Big Apple Café; NJ Transit; Temp Compressor; Snack-N-Wheels; Greyhound Lines; Inc. | 168h | 168h |
| 18 | 2.1.3 | Subway Level - Room NSB1 | 3d | 2008-12-10 A | 2008-12-12 A | 17 | 100% |  |  | finish no earlier than 2008-12-12 |  | MC Caffee Shop; Fanny Farmer; Hudson News; Greyhound tickets and Adironak Trailways | 96h | 96h |
| 19 | 2.1.4 | Subway Level - Room SS4F | 1d | 2008-12-15 A | 2008-12-15 A | 18 | 100% |  |  |  |  | Adirondak Trailways; Au Bon Pain; Hudson News; Walgreens; Music Expolsion; Villa Pizza and Post & Coach | 48h | 48h |
| 20 | 2.1.5 | Subway Level - Room SL4F | 1d | 2008-12-15 A | 2008-12-15 A | 19 | 100% |  |  |  |  | PA Master Meter | 8h | 8h |
| 21 | 2.1.6 | Subway Level - Room SL21 | 1d | 2008-12-16 A | 2008-12-16 A | 20 | 100% |  |  |  |  | Postal Service; Jo-Anns Nuts; Hudson News; Deli Plus; NY Blood Center; Cheese Hut; Downes Luggage; Lost-N-Found; NJ Transit Bus; Marrella Hair; MC Caffee Shop | 88h | 88h |
| 22 | 2.1.7 | Basement Switchgear - SB1B | 1d | 2008-12-17 A | 2008-12-17 A | 21 | 100% |  |  |  |  | PA Master Meter | 8h | 8h |
| 23 | 2.1.8 | Ground Floor - Stock Room | 1d | 2008-12-18 | 2008-12-18 | 22 |  |  | 0d | start no earlier than 2008-12-17 |  |  |  |  |
